# Plan - Schedule - ALPHA~484

Schedule from MS Project, 2008-03-06 to 2008-03-28, status date 2008-03-06, 4 hours a day, costs in $, A marks actual dates.
DDTH

## Calendars

- ngoc-you: Mon-Sun 18:00-22:00.

## Resources

| Resource | Rate |
| --- | --- |
| Dev-NBThanh | 5 |

## Schedule

| ID | WBS | Task | Duration | Start | Finish | Predecessors | Complete | Remaining | Baseline start | Baseline finish | Baseline duration | Total slack | Free slack | Resources | Work | Actual work | Cost | Baseline cost | Actual cost |
| --- | --- | --- | --- | --- | --- | --- | --- | --- | --- | --- | --- | --- | --- | --- | --- | --- | --- | --- | --- |
| 1 | 1 | **Image Upload/Attachment** | 2d | 2008-03-06 18:00 A | 2008-03-07 22:00 A |  | 100% |  | 2008-03-03 18:00 | 2008-03-04 22:00 | 2d |  |  |  | 8h | 8h | 40 | 40 | 40 |
| 2 | 1.1 | Display attach images & Auto-Resize large ones in ads | 0.5d | 2008-03-06 18:00 A | 2008-03-06 20:00 A |  | 100% |  | 2008-03-03 18:00 | 2008-03-03 20:00 | 0.5d |  |  | Dev-NBThanh | 2h | 2h | 10 | 10 | 10 |
| 3 | 1.2 | Implement "Upload" function - "Create Ads" page | 0.5d | 2008-03-06 20:00 A | 2008-03-06 22:00 A | 2 | 100% |  | 2008-03-03 20:00 | 2008-03-03 22:00 | 0.5d |  |  | Dev-NBThanh | 2h | 2h | 10 | 10 | 10 |
| 4 | 1.3 | Implement "Upload" function - "Edit Ads" page | 0.5d | 2008-03-07 18:00 A | 2008-03-07 20:00 A | 3 | 100% |  | 2008-03-04 18:00 | 2008-03-04 20:00 | 0.5d |  |  | Dev-NBThanh | 2h | 2h | 10 | 10 | 10 |
| 5 | 1.4 | Implement "Delete image" function - "Edit Ads" page | 0.5d | 2008-03-07 20:00 A | 2008-03-07 22:00 A | 4 | 100% |  | 2008-03-04 20:00 | 2008-03-04 22:00 | 0.5d |  |  | Dev-NBThanh | 2h | 2h | 10 | 10 | 10 |
| 6 | 2 | **"Report Admin" Function** | 1d | 2008-03-08 18:00 A | 2008-03-08 22:00 | 1 | 50% | 0.5d | 2008-03-05 18:00 | 2008-03-05 22:00 | 1d | 18.25d | 0d |  | 4h | 2h | 20 | 20 | 10 |
| 7 | 2.1 | Add "Report Admin" link to "View Ads" page & Report Form | 0.5d | 2008-03-08 18:00 A | 2008-03-08 20:00 A |  | 100% |  | 2008-03-05 18:00 | 2008-03-05 20:00 | 0.5d |  |  | Dev-NBThanh | 2h | 2h | 10 | 10 | 10 |
| 8 | 2.2 | List of "Reported Ads" in Admin section | 0.25d | 2008-03-08 20:00 | 2008-03-08 21:00 | 7 |  |  | 2008-03-05 20:00 | 2008-03-05 21:00 | 0.25d | 18.25d | 0d | Dev-NBThanh | 1h |  | 5 | 5 |  |
| 9 | 2.3 | Form for Admin to process "Reported Ads | 0.25d | 2008-03-08 21:00 | 2008-03-08 22:00 | 8 |  |  | 2008-03-05 21:00 | 2008-03-05 22:00 | 0.25d | 18.25d |  | Dev-NBThanh | 1h |  | 5 | 5 |  |
| 10 | 3 | **SEO Support** | 1d | 2008-03-09 18:00 A | 2008-03-09 22:00 | 6 | 25% | 0.75d | 2008-03-06 18:00 | 2008-03-06 22:00 | 1d | 18.25d | 0d |  | 3h | 1h | 15 | 15 | 5 |
| 11 | 3.1 | View Ads, View Cat | 0.25d | 2008-03-09 18:00 A | 2008-03-09 19:00 A |  | 100% |  | 2008-03-06 18:00 | 2008-03-06 19:00 | 0.25d |  |  | Dev-NBThanh | 1h | 1h | 5 | 5 | 5 |
| 12 | 3.2 | Track Traffic (Google Analysis) | 0.5d | 2008-03-09 19:00 | 2008-03-09 21:00 | 11 |  |  | 2008-03-06 19:00 | 2008-03-06 21:00 | 0.5d | 18.25d | 0d | Dev-NBThanh | 2h |  | 10 | 10 |  |
| 13 | 3.3 | Buffer | 0.25d | 2008-03-09 21:00 | 2008-03-09 22:00 | 12 |  |  | 2008-03-06 21:00 | 2008-03-06 22:00 | 0.25d | 18.25d |  |  |  |  |  |  |  |
| 14 | 4 | **Moderator & Ads Management** | 1d | 2008-03-10 18:00 A | 2008-03-10 22:00 | 10 | 25% | 0.75d | 2008-03-07 18:00 | 2008-03-07 22:00 | 1d | 18d |  |  | 2h | 1h | 10 | 10 | 5 |
| 15 | 4.1 | New Moderator Group | 0.25d | 2008-03-10 18:00 A | 2008-03-10 19:00 A |  | 100% |  | 2008-03-07 18:00 | 2008-03-07 19:00 | 0.25d |  |  | Dev-NBThanh | 1h | 1h | 5 | 5 | 5 |
| 16 | 4.2 | Administrator & Moderator can delete ads | 0.25d | 2008-03-10 19:00 | 2008-03-10 20:00 | 15 |  |  | 2008-03-07 19:00 | 2008-03-07 20:00 | 0.25d | 18d | 0d | Dev-NBThanh | 1h |  | 5 | 5 |  |
| 17 | 4.3 | Buffer | 0.5d | 2008-03-10 20:00 | 2008-03-10 22:00 | 16 |  |  | 2008-03-07 20:00 | 2008-03-07 22:00 | 0.5d | 18d |  |  |  |  |  |  |  |
| 18 | 5 | **Categorize Ads by Province/City** | 1d | 2008-03-11 18:00 A | 2008-03-11 22:00 A | 14 | 100% |  | 2008-03-08 18:00 | 2008-03-08 22:00 | 1d |  |  |  | 4h | 4h | 20 | 20 | 20 |
| 19 | 5.1 | New data field for ads - database | 0.25d | 2008-03-11 18:00 A | 2008-03-11 19:00 A |  | 100% |  | 2008-03-08 18:00 | 2008-03-08 19:00 | 0.25d |  |  | Dev-NBThanh | 1h | 1h | 5 | 5 | 5 |
| 20 | 5.2 | New data field for ads - "post new ads" form | 0.25d | 2008-03-11 19:00 A | 2008-03-11 20:00 A | 19 | 100% |  | 2008-03-08 19:00 | 2008-03-08 20:00 | 0.25d |  |  | Dev-NBThanh | 1h | 1h | 5 | 5 | 5 |
| 21 | 5.3 | New data field for ads - "edit ads" form | 0.25d | 2008-03-11 20:00 A | 2008-03-11 21:00 A | 20 | 100% |  | 2008-03-08 20:00 | 2008-03-08 21:00 | 0.25d |  |  | Dev-NBThanh | 1h | 1h | 5 | 5 | 5 |
| 22 | 5.4 | List of 64 cities/provinces of Vietnam | 0.25d | 2008-03-11 21:00 A | 2008-03-11 22:00 A | 21 | 100% |  | 2008-03-08 21:00 | 2008-03-08 22:00 | 0.25d |  |  | Dev-NBThanh | 1h | 1h | 5 | 5 | 5 |
| 23 | 6 | **Mail Confirmation for Registration** | 2d | 2008-03-12 18:00 A | 2008-03-13 22:00 | 18 | 75% | 0.5d | 2008-03-09 18:00 | 2008-03-11 10:00 | 2d | 14.25d | 0d |  | 6h | 6h | 30 | 30 | 30 |
| 24 | 6.1 | New data field - database | 0.25d | 2008-03-12 18:00 A | 2008-03-12 19:00 A |  | 100% |  | 2008-03-09 18:00 | 2008-03-09 19:00 | 0.25d |  |  | Dev-NBThanh | 1h | 1h | 5 | 5 | 5 |
| 25 | 6.2 | Email Confirmation & Account Activation | 0.25d | 2008-03-12 19:00 A | 2008-03-12 20:00 A | 24 | 100% |  | 2008-03-09 19:00 | 2008-03-09 20:00 | 0.25d |  |  | Dev-NBThanh | 1h | 1h | 5 | 5 | 5 |
| 26 | 6.3 | Resent Confirmation Email (Form, Email & CAPTCHA) | 0.5d | 2008-03-12 20:00 A | 2008-03-12 22:00 A | 25 | 100% |  | 2008-03-09 20:00 | 2008-03-09 22:00 | 0.5d |  |  | Dev-NBThanh | 2h | 2h | 10 | 10 | 10 |
| 27 | 6.4 | Recheck account activation status at other places on site | 0.5d | 2008-03-13 18:00 A | 2008-03-13 20:00 A | 26 | 100% |  | 2008-03-10 18:00 | 2008-03-10 20:00 | 0.5d |  |  | Dev-NBThanh | 2h | 2h | 10 | 10 | 10 |
| 28 | 6.5 | Buffer | 0.5d | 2008-03-13 20:00 | 2008-03-13 22:00 | 27 |  |  | 2008-03-11 08:00 | 2008-03-11 10:00 | 0.5d | 2d |  |  |  |  |  |  |  |

| ID | WBS | Task | Duration | Start | Finish | Predecessors | Complete | Remaining | Baseline start | Baseline finish | Baseline duration | Total slack | Free slack | Resources | Work | Actual work | Cost | Baseline cost | Actual cost |
| --- | --- | --- | --- | --- | --- | --- | --- | --- | --- | --- | --- | --- | --- | --- | --- | --- | --- | --- | --- |
| 29 | 7 | **CAPTCHA** | 2d | 2008-03-14 18:00 A | 2008-03-15 22:00 | 23 | 75% | 0.5d | 2008-03-11 18:00 | 2008-03-13 09:00 | 2d | 13d |  |  | 7h | 6h | 35 | 35 | 30 |
| 30 | 7.1 | Implement CAPTCHA library | 1d | 2008-03-14 18:00 A | 2008-03-14 22:00 A |  | 100% |  | 2008-03-11 18:00 | 2008-03-11 22:00 | 1d |  |  | Dev-NBThanh | 4h | 4h | 20 | 20 | 20 |
| 31 | 7.2 | Embed CAPTCHA into "Register" page | 0.25d | 2008-03-15 18:00 A | 2008-03-15 19:00 A | 30 | 100% |  | 2008-03-12 18:00 | 2008-03-12 19:00 | 0.25d |  |  | Dev-NBThanh | 1h | 1h | 5 | 5 | 5 |
| 32 | 7.3 | Embed CAPTCHA into "Contact Poster" page | 0.25d | 2008-03-15 19:00 | 2008-03-15 20:00 | 31 |  |  | 2008-03-12 19:00 | 2008-03-12 20:00 | 0.25d | 13d | 0d | Dev-NBThanh | 1h |  | 5 | 5 |  |
| 33 | 7.4 | Embeded CAPTCHA into "Report Admin" page | 0.25d | 2008-03-15 20:00 A | 2008-03-15 21:00 A | 32 | 100% |  | 2008-03-12 20:00 | 2008-03-12 21:00 | 0.25d |  |  | Dev-NBThanh | 1h | 1h | 5 | 5 | 5 |
| 34 | 7.5 | Buffer | 0.25d | 2008-03-15 21:00 | 2008-03-15 22:00 | 33 |  |  | 2008-03-13 08:00 | 2008-03-13 09:00 | 0.25d | 13d |  |  |  |  |  |  |  |
| 35 | 8 | **Online Vietnamese Keyboard** | 0.5d | 2008-03-16 18:00 A | 2008-03-16 20:00 A | 29 | 100% |  | 2008-03-13 18:00 | 2008-03-13 20:00 | 0.5d |  |  |  | 2h | 2h | 10 | 10 | 10 |
| 36 | 8.1 | Install Online Vietnamese Keyboard on all forms | 0.5d | 2008-03-16 18:00 A | 2008-03-16 20:00 A |  | 100% |  | 2008-03-13 18:00 | 2008-03-13 20:00 | 0.5d |  |  | Dev-NBThanh | 2h | 2h | 10 | 10 | 10 |
| 37 | 9 | **Post to Category** | 0.5d | 2008-03-16 20:00 A | 2008-03-16 22:00 A | 35 | 100% |  | 2008-03-13 20:00 | 2008-03-13 22:00 | 0.5d |  |  |  | 2h | 2h | 10 | 10 | 10 |
| 38 | 9.1 | Link from category to post form | 0.5d | 2008-03-16 20:00 A | 2008-03-16 22:00 A |  | 100% |  | 2008-03-13 20:00 | 2008-03-13 22:00 | 0.5d |  |  | Dev-NBThanh | 2h | 2h | 10 | 10 | 10 |
| 39 | 10 | **Categorize Ads by Buy/Sell** | 1d | 2008-03-17 18:00 A | 2008-03-17 22:00 A | 37 | 100% |  |  |  |  |  |  |  | 4h | 4h | 20 |  | 20 |
| 40 | 10.1 | New data field for ads - database | 0.25d | 2008-03-17 18:00 A | 2008-03-17 19:00 A |  | 100% |  |  |  |  |  |  | Dev-NBThanh | 1h | 1h | 5 |  | 5 |
| 41 | 10.2 | New data field for ads - "post new ads" form | 0.25d | 2008-03-17 19:00 A | 2008-03-17 20:00 A | 40 | 100% |  |  |  |  |  |  | Dev-NBThanh | 1h | 1h | 5 |  | 5 |
| 42 | 10.3 | New data field for ads - "edit ads" form | 0.25d | 2008-03-17 20:00 A | 2008-03-17 21:00 A | 41 | 100% |  |  |  |  |  |  | Dev-NBThanh | 1h | 1h | 5 |  | 5 |
| 43 | 10.4 | Buffer | 0.25d | 2008-03-17 21:00 A | 2008-03-17 22:00 A | 42 | 100% |  |  |  |  |  |  | Dev-NBThanh | 1h | 1h | 5 |  | 5 |
| 44 | 11 | **Categorize Ads by Price** | 1d | 2008-03-18 18:00 A | 2008-03-18 22:00 A | 39 | 100% |  |  |  |  |  |  |  | 4h | 4h | 20 |  | 20 |
| 45 | 11.1 | New data field for ads - database | 0.25d | 2008-03-18 18:00 A | 2008-03-18 19:00 A |  | 100% |  |  |  |  |  |  | Dev-NBThanh | 1h | 1h | 5 |  | 5 |
| 46 | 11.2 | New data field for ads - "post new ads" form | 0.25d | 2008-03-18 19:00 A | 2008-03-18 20:00 A | 45 | 100% |  |  |  |  |  |  | Dev-NBThanh | 1h | 1h | 5 |  | 5 |
| 47 | 11.3 | New data field for ads - "edit ads" form | 0.25d | 2008-03-18 20:00 A | 2008-03-18 21:00 A | 46 | 100% |  |  |  |  |  |  | Dev-NBThanh | 1h | 1h | 5 |  | 5 |
| 48 | 11.4 | Buffer | 0.25d | 2008-03-18 21:00 A | 2008-03-18 22:00 A | 47 | 100% |  |  |  |  |  |  | Dev-NBThanh | 1h | 1h | 5 |  | 5 |
| 49 | 12 | **Watch Category** | 1d | 2008-03-19 18:00 | 2008-03-19 22:00 | 44 |  |  |  |  |  | 0d |  |  | 4h |  | 20 |  |  |
| 50 | 12.1 | Allowed user to "watch" a category | 0.25d | 2008-03-19 18:00 | 2008-03-19 19:00 |  |  |  |  |  |  | 0d |  | Dev-NBThanh | 1h |  | 5 |  |  |
| 51 | 12.2 | Allowed user to "unwatch" a category | 0.25d | 2008-03-19 19:00 | 2008-03-19 20:00 | 50 |  |  |  |  |  | 0d |  | Dev-NBThanh | 1h |  | 5 |  |  |
| 52 | 12.3 | Send notification email when a new ads is posted | 0.5d | 2008-03-19 20:00 | 2008-03-19 22:00 | 51 |  |  |  |  |  | 0d |  | Dev-NBThanh | 2h |  | 10 |  |  |

| ID | WBS | Task | Duration | Start | Finish | Predecessors | Baseline start | Baseline finish | Baseline duration | Total slack | Resources | Work | Cost |
| --- | --- | --- | --- | --- | --- | --- | --- | --- | --- | --- | --- | --- | --- |
| 53 | 13 | **Search Ads** | 3d | 2008-03-20 18:00 | 2008-03-22 22:00 | 49 | 2008-03-03 08:00 | 2008-03-03 12:00 | 1d? | 0d |  | 12h | 60 |
| 54 | 13.1 | Search Form & Link & Result Page | 0.5d | 2008-03-20 18:00 | 2008-03-20 20:00 |  |  |  |  | 0d | Dev-NBThanh | 2h | 10 |
| 55 | 13.2 | By Category | 0.25d | 2008-03-20 20:00 | 2008-03-20 21:00 | 54 | 2008-03-03 08:00 | 2008-03-03 12:00 | 1d? | 0d | Dev-NBThanh | 1h | 5 |
| 56 | 13.3 | By City/Province | 0.25d | 2008-03-20 21:00 | 2008-03-20 22:00 | 55 | 2008-03-03 08:00 | 2008-03-03 12:00 | 1d? | 0d | Dev-NBThanh | 1h | 5 |
| 57 | 13.4 | By Buy/Sell | 0.25d | 2008-03-21 18:00 | 2008-03-21 19:00 | 56 |  |  |  | 0d | Dev-NBThanh | 1h | 5 |
| 58 | 13.5 | By Price | 0.25d | 2008-03-21 19:00 | 2008-03-21 20:00 | 57 |  |  |  | 0d | Dev-NBThanh | 1h | 5 |
| 59 | 13.6 | By Poster | 0.25d | 2008-03-21 20:00 | 2008-03-21 21:00 | 58 |  |  |  | 0d | Dev-NBThanh | 1h | 5 |
| 60 | 13.7 | "Same poster" link when view ads, points to "By Poster" search | 0.25d | 2008-03-21 21:00 | 2008-03-21 22:00 | 59 |  |  |  | 0d | Dev-NBThanh | 1h | 5 |
| 61 | 13.8 | By Keywords | 1d | 2008-03-22 18:00 | 2008-03-22 22:00 | 60 |  |  |  | 0d | Dev-NBThanh | 4h | 20 |
| 62 | 14 | **Thumbnail** | 0.5d | 2008-03-23 18:00 | 2008-03-23 20:00 | 53 |  |  |  | 0d |  | 2h | 10 |
| 63 | 14.1 | Display thumbnail of ads' first image when viewing category | 0.5d | 2008-03-23 18:00 | 2008-03-23 20:00 |  |  |  |  | 0d | Dev-NBThanh | 2h | 10 |
| 64 | 15 | **Related Ads** | 0.5d | 2008-03-23 20:00 | 2008-03-23 22:00 | 62 |  |  |  | 0d |  | 2h | 10 |
| 65 | 15.1 | Display related ads (same Category, by Province, Buy/Sell type) when view an ads | 0.5d | 2008-03-23 20:00 | 2008-03-23 22:00 |  |  |  |  | 0d | Dev-NBThanh | 2h | 10 |
| 66 | 16 | Unconfirmed/Unclear tasks & Buffer | 5d | 2008-03-24 18:00 | 2008-03-28 22:00 | 64 |  |  |  | 0d |  |  |  |
